# WarmApp

Schedule from MS Project, 2018-07-01 to 2020-06-30, costs in €.
Plan izrade projekta
Elektrotehnicki fakultet Univerziteta u Beogradu
Projekat omogucava jeftino i efikasno grejanje za ugrozeno stanovnistvo.

## Calendars

- Standard: Mon-Fri 08:00-12:00, 13:00-17:00; Sat-Sun off. Exceptions (off unless hours are given): 2019-01-01 (Nova godina), 2019-01-07 (Bozic), 2019-05-01 (Prvi maj), 2020-01-01 (Nova godina), 2020-01-07 (Bozic), 2020-05-01 (Prvi maj).

## Resources

| Resource | Rate | Cost per use |
| --- | --- | --- |
| Dell laptop | 1885 | 200 |
| HP server | 3400 | 100 |
| Network | 29300 | 100 |
| Norveski panel | 15000 | 500 |
| Termostat | 10000 | 200 |
| Mobilni uredjaj | 50 |  |
| Grejno telo | 180 | 500 |
| ETF-R1 | 10 |  |
| ADAX-R1 | 30.13 |  |
| LJUBLJANA-R1 | 17.13 |  |
| UMEA-R1 | 30.13 |  |
| ADAX-T3 | 23.75 |  |
| LJUBLJANA-T1 | 12.75 |  |
| UMEA-T1 | 23.75 |  |
| ETF-S1 | 6.25 |  |
| IT-R1 | 26.75 |  |
| IT-T2 | 20.25 |  |
| ETF-TEST | 7.13 |  |
| ADAX-TEST | 30.13 |  |
| ADAX-R2 | 30.13 |  |
| ADAX-T2 | 23.75 |  |
| ADAX-T1 | 23.75 |  |
| ADAX-R4 | 30.13 |  |
| ADAX-R3 | 30.13 |  |
| ADAX-T5 | 23.75 |  |
| ADAX-T4 | 23.75 |  |
| MENADZER-ETF1 | 13.5 |  |
| MENADZER-ETF2 | 13.5 |  |
| MENADZER-ADAX | 36.75 |  |
| MENADZER-ULJ | 20.5 |  |
| MENADZER-UU | 36.75 |  |
| MENADZER-IT | 35 |  |
| IT-T1 | 20.25 |  |
| LJUBLJANA-R2 | 17.13 |  |
| LJUBLJANA-T2 | 12.75 |  |
| IT-R3 | 26.75 |  |
| IT-R2 | 26.75 |  |
| ETF-R3 | 10 |  |
| ETF-R2 | 10 |  |
| ETF-S4 | 6.25 |  |
| ETF-S2 | 6.25 |  |
| ETF-S3 | 6.25 |  |
| ETF-S5 | 6.25 |  |
| ETF-R4 | 10 |  |
| ADMINISTRACIJA | 5.63 |  |
| MENADZER-GLAVNI | 13.5 |  |

## Schedule

| ID | WBS | Task | Type | Duration | Start | Finish | Predecessors | Total slack | Resources | Work | Cost |
| --- | --- | --- | --- | --- | --- | --- | --- | --- | --- | --- | --- |
| 1 | 1 | **Planiranje projekta** |  | 23d | 2018-07-01 | 2018-07-31 |  |  |  | 648h | 44,910 |
| 2 | 1.1 | Inicijalni sastanak | manual | 5d | 2018-07-02 | 2018-07-06 |  |  | MENADZER-ETF1; MENADZER-ETF2; MENADZER-ADAX; MENADZER-ULJ; MENADZER-UU; MENADZER-IT | 240h | 6,240 |
| 3 | 1.2 | Formiranje detaljnog plana projekta | manual | 5d | 2018-07-09 | 2018-07-13 | 2 |  | MENADZER-ETF1; MENADZER-ETF2; MENADZER-ADAX | 120h | 2,550 |
| 4 | 1.3 | Odredjivanje projektnih rokova | manual | 3d | 2018-07-16 | 2018-07-18 | 3 |  | MENADZER-ETF1; MENADZER-ETF2; MENADZER-ADAX | 72h | 1,530 |
| 5 | 1.4 | Odredjivanje projektnih resursa | manual | 4d | 2018-07-19 | 2018-07-24 | 4 |  | MENADZER-ETF1; MENADZER-ETF2; MENADZER-ADAX | 96h | 2,040 |
| 6 | 1.5 | Formiranje detaljnog budzeta projekta | manual | 5d | 2018-07-25 | 2018-07-31 | 5 |  | MENADZER-ETF1; MENADZER-ETF2; MENADZER-ADAX | 120h | 2,550 |
| 7 | 1.6 | Plan projekta | milestone, manual | 1d | 2018-07-31 | 2018-07-31 |  |  |  |  |  |
| 8 | 2 | **Formiranje timova I obezbedjivanje resursa za rad** |  | 44d | 2018-08-01 | 2018-09-30 | 1 |  |  | 640h | 26,108 |
| 9 | 2.1 | **Formiranje timova** |  | 8d | 2018-08-01 | 2018-08-10 |  | 0d |  | 224h | 6,024 |
| 10 | 2.1.1 | Inicijalni sastanak menadzera I predstavnika svih partnera | manual | 1d | 2018-08-01 | 2018-08-01 | 6 |  | MENADZER-ETF1; MENADZER-ADAX; MENADZER-ULJ; MENADZER-UU; MENADZER-IT | 40h | 1,140 |
| 11 | 2.1.2 | Podela u timove | manual | 3d | 2018-08-02 | 2018-08-06 | 10 |  | MENADZER-ETF1 | 24h | 324 |
| 12 | 2.1.3 | All-hands sastanak | manual | 4d | 2018-08-07 | 2018-08-10 | 11 |  | MENADZER-ETF1; MENADZER-ADAX; MENADZER-ULJ; MENADZER-UU; MENADZER-IT | 160h | 4,560 |
| 13 | 2.2 | **Obezbedjivanje resursa za rad** |  | 43d | 2018-08-01 | 2018-09-28 |  | 0d |  | 416h | 5,084 |
| 14 | 2.2.1 | Sastavljanje I objavljivanje konkursa za javnu nabavku | manual | 8d | 2018-08-01 | 2018-08-10 | 6 |  | MENADZER-ETF2; ETF-R1 [50%] | 96h | 1,184 |
| 15 | 2.2.2 | Primanje konkursnih prijava | manual | 20d | 2018-08-13 | 2018-09-07 | 14 |  | MENADZER-ETF2 [50%]; ETF-R1 [50%] | 160h | 1,880 |
| 16 | 2.2.3 | Odlucivanje o izboru vendora | manual | 5d | 2018-09-10 | 2018-09-14 | 15 |  | MENADZER-ETF1; MENADZER-ETF2; ETF-R1 | 120h | 1,480 |
| 17 | 2.2.4 | Objava izbora vendora I sklapanje ugovora | manual | 5d | 2018-09-17 | 2018-09-21 | 16 |  | MENADZER-ETF2 | 40h | 540 |
| 18 | 2.2.5 | Isporuka dogovorenih resursa | manual | 5d | 2018-09-24 | 2018-09-28 | 17 |  |  |  |  |
| 19 | 2.2.6 | Javne nabavke | milestone, manual | 1d | 2018-09-28 | 2018-09-28 |  |  |  |  |  |
| 20 | 3 | **Izrada I testiranje optimizovanog norveskog panela** |  | 172d | 2018-10-01 | 2019-05-31 | 8 |  | Norveski panel | 6892.8h | 266,054.88 |
| 21 | 3.1 | Sprovodjenje istrazivanja | manual | 88d | 2018-10-01 | 2019-02-01 | 18 |  | ADAX-R1; ADAX-R2; IT-R1; UMEA-R1 [25%]; UMEA-T1 [20%] | 2428.8h | 69,901.92 |
| 22 | 3.2 | Keriranje dizajna | manual | 20d | 2019-02-04 | 2019-03-01 | 21 |  | ADAX-R1 [50%]; ADAX-R2 [50%]; ADAX-T1; ADAX-T2; ADAX-T3; IT-T1; IT-T2; UMEA-T1 | 1120h | 26,500.8 |
| 23 | 3.3 | Izrada prototipa | manual | 20d | 2019-03-04 | 2019-03-29 | 22 |  | ADAX-R1 [25%]; ADAX-R2 [25%]; ADAX-T1; ADAX-T2; ADAX-T3; IT-T1 [50%]; IT-T2 [50%]; UMEA-T1 | 880h | 20,850.4 |
| 24 | 3.4 | Provera funkcionalnosti | manual | 44d | 2019-04-01 | 2019-05-31 | 23 |  | ADAX-R1 [50%]; ADAX-R2 [50%]; ADAX-T1; ADAX-T2; ADAX-T3; IT-T1; IT-T2; UMEA-T1 | 2464h | 58,301.76 |
| 25 | 3.5 | Verifikacija dizajna optimizovanog norveskog panela | milestone, manual | 1d | 2019-05-31 | 2019-05-31 |  |  |  |  |  |

| ID | WBS | Task | Type | Duration | Start | Finish | Predecessors | Total slack | Resources | Work | Cost |
| --- | --- | --- | --- | --- | --- | --- | --- | --- | --- | --- | --- |
| 26 | 4 | **Izrada I testiranje termostata za optimizovani norveski panel** |  | 172d | 2018-10-01 | 2019-05-31 | 8 |  | Termostat | 7218h | 235,350.42 |
| 27 | 4.1 | Kreiranje dizajna | manual | 45d | 2018-10-01 | 2018-11-30 | 18 |  | ADAX-R3; ADAX-R4; ADAX-T4 [50%]; ADAX-T5 [50%]; LJUBLJANA-R1; LJUBLJANA-R2; IT-R2; IT-R3 | 2520h | 61,837.2 |
| 28 | 4.2 | Izrada prototipa | manual | 53d | 2018-12-03 | 2019-02-15 | 27 |  | ADAX-R3 [25%]; ADAX-R4 [25%]; ADAX-T4; ADAX-T5; LJUBLJANA-R1 [75%]; LJUBLJANA-T1 [50%]; LJUBLJANA-T2 [50%]; IT-R2 [50%]; IT-R3 [50%] | 2226h | 48,722.9 |
| 29 | 4.3 | **Testiranje prototipa** |  | 45d | 2019-02-18 | 2019-04-19 |  | 0d |  | 1080h | 21,690 |
| 30 | 4.3.1 | Testiranje funkcionalnosti termostata na LAN konekciji | manual | 20d | 2019-02-18 | 2019-03-15 | 28 |  | ADAX-T4; ADAX-T5; LJUBLJANA-T1 | 480h | 9,640 |
| 31 | 4.3.2 | Testiranje funkcionalnosti termostata na WiFi konekciji | manual | 25d | 2019-03-18 | 2019-04-19 | 30 |  | ADAX-T4; ADAX-T5; LJUBLJANA-T2 | 600h | 12,050 |
| 32 | 4.4 | Integracija sa norveskim panelom | manual | 7d | 2019-04-22 | 2019-04-30 | 31 |  | ADAX-R3 [50%]; ADAX-R4 [50%]; ADAX-T4; ADAX-T5; LJUBLJANA-R1; LJUBLJANA-T1; LJUBLJANA-T2 | 336h | 6,734.56 |
| 33 | 4.5 | Testiranje zajednickih funkcionalnosti | manual | 22d | 2019-05-02 | 2019-05-31 | 32 |  | ADAX-R3 [50%]; ADAX-R4 [50%]; ADAX-T4; ADAX-T5; LJUBLJANA-R1; LJUBLJANA-T1; LJUBLJANA-T2 | 1056h | 21,165.76 |
| 34 | 4.6 | Verifikacija dizajna termostata | milestone, manual | 1d | 2019-05-31 | 2019-05-31 |  |  |  |  |  |
| 35 | 5 | **Izrada lokalne mreze** |  | 20d | 2019-06-03 | 2019-06-28 | 20, 26 |  | Network | 1080h | 54,571.6 |
| 36 | 5.1 | Dizajniranje LAN I WiFi modela lokalne mreze | manual | 5d | 2019-06-03 | 2019-06-07 | 33 |  | LJUBLJANA-R1; LJUBLJANA-R2; ETF-R1; ETF-R2; ETF-R3; ADAX-T1 [50%]; ADAX-T4 [50%] | 240h | 3,520.4 |
| 37 | 5.2 | Izrada prototipa LAN lokalne mreze | manual | 5d | 2019-06-10 | 2019-06-14 | 36 |  | LJUBLJANA-R1; LJUBLJANA-R2; LJUBLJANA-T1; ETF-R1; ETF-R2; ETF-R3 | 240h | 3,080.4 |
| 38 | 5.3 | Izrada prototipa WiFi lokalne mreze | manual | 5d | 2019-06-17 | 2019-06-21 | 37 |  | LJUBLJANA-R1; LJUBLJANA-R2; LJUBLJANA-T2; ETF-R1; ETF-R2; ETF-R3 | 240h | 3,080.4 |
| 39 | 5.4 | Testiranje funkcionalnosti | manual | 5d | 2019-06-24 | 2019-06-28 | 38 |  | LJUBLJANA-R1; LJUBLJANA-R2; LJUBLJANA-T1; LJUBLJANA-T2; ETF-R1; ETF-R2; ETF-R3; ADAX-T1; ADAX-T4 | 360h | 5,490.4 |
| 40 | 5.5 | Verifikacija dizajna lokalne mreze | milestone, manual | 1d | 2019-06-28 | 2019-06-28 |  |  |  |  |  |
| 41 | 6 | **Izrada softvera za regulaciju temperature** |  | 132d | 2019-07-01 | 2019-12-31 | 35 |  | HP server; Dell laptop [300%] | 3760h | 70,365 |
| 42 | 6.1 | Dizajniranje serverske strane za obradu podataka | manual | 8d | 2019-07-01 | 2019-07-10 | 39 |  | ETF-R1; ETF-R2; ETF-S1; ADAX-T1 | 256h | 3,200 |
| 43 | 6.2 | Izrada serverske strane za obradu podataka | manual | 22d | 2019-07-11 | 2019-08-09 | 42 |  | ETF-R1; ETF-R2; ETF-S1 | 528h | 4,620 |
| 44 | 6.3 | Testiranje serverske strane za obradu podataka | manual | 10d | 2019-08-12 | 2019-08-23 | 43 |  | ETF-R1; ETF-R2; ETF-S1; ADAX-T1 | 320h | 4,000 |
| 45 | 6.4 | Dizajniranje komunikacije sa termostatom | manual | 10d | 2019-08-26 | 2019-09-06 | 44 |  | ETF-R1; ETF-R2; ETF-S1; ADAX-T4; LJUBLJANA-T1 | 400h | 5,020 |
| 46 | 6.5 | Izrada komunikacije sa termostatom | manual | 25d | 2019-09-09 | 2019-10-11 | 45 |  | ETF-R1; ETF-R2; ETF-S1; ADAX-T4 | 800h | 10,000 |
| 47 | 6.6 | Testiranje komunikacije sa termostatom | manual | 10d | 2019-10-14 | 2019-10-25 | 46 |  | ETF-R1; ETF-R2; ETF-S1; ADAX-T4; LJUBLJANA-T1 | 400h | 5,020 |
| 48 | 6.7 | Dizajniranje komunikacije sa aplikacijom | manual | 7d | 2019-10-28 | 2019-11-05 | 47 |  | ETF-R1; ETF-R2; ETF-S1 | 168h | 1,470 |
| 49 | 6.8 | Izrada komunikacije sa aplikacijom | manual | 23d | 2019-11-06 | 2019-12-06 | 48 |  | ETF-R1; ETF-R2; ETF-S1 | 552h | 4,830 |
| 50 | 6.9 | Testiranje komunikacije sa aplikacijom | manual | 8d | 2019-12-09 | 2019-12-18 | 49 |  | ETF-R1; ETF-R2; ETF-S1 | 192h | 1,680 |
| 51 | 6.10 | Testiranje servera | manual | 9d | 2019-12-19 | 2019-12-31 | 50 |  | ETF-R1; ETF-S1 | 144h | 1,170 |
| 52 | 6.11 | Verifikacija dizajna softvera za regulaciju temperature | milestone, manual | 1d | 2019-12-31 | 2019-12-31 |  |  |  |  |  |

| ID | WBS | Task | Type | Duration | Start | Finish | Predecessors | Resources | Work | Cost |
| --- | --- | --- | --- | --- | --- | --- | --- | --- | --- | --- |
| 53 | 7 | **Izrada korisnicke aplikacije za daljinsku kontrolu sistema za grejanje** |  | 66d | 2019-10-01 | 2019-12-31 |  | Dell laptop [600%] | 2784h | 54,490 |
| 54 | 7.1 | Kreiranje dizajna korisnickog interfejsa | manual | 9d | 2019-10-01 | 2019-10-11 |  | ETF-R3; ETF-R4; ADAX-T1; ADAX-T5 | 288h | 4,860 |
| 55 | 7.2 | Izrada prototipa korisnickog interfejsa | manual | 40d | 2019-10-14 | 2019-12-06 | 54 | ETF-R3; ETF-R4 [25%]; ETF-S2; ETF-S3; ETF-S4; ETF-S5 | 1680h | 12,000 |
| 56 | 7.3 | Testiranje komunikacije sa serverom | manual | 17d | 2019-12-09 | 2019-12-31 | 55 | ETF-R3; ETF-R4; ETF-S2; ETF-S3; ETF-S4; ETF-S5 | 816h | 6,120 |
| 57 | 7.4 | Verifikacija dizajna aplikacije | milestone, manual | 1d | 2019-12-31 | 2019-12-31 |  |  |  |  |
| 58 | 8 | **Testiranje funkcionalnosti celokupnog sistema I kvaliteta pruzene usluge** |  | 127d | 2020-01-02 | 2020-06-30 | 41, 53 | HP server; Grejno telo [25000%]; Mobilni uredjaj [50000%]; Network | 4964h | 210,848.96 |
| 59 | 8.1 | Spajanje modula u celinu | manual | 6d | 2020-01-02 | 2020-01-10 | 41, 53 | ETF-R1; ETF-TEST; ADAX-T1 | 144h | 1,962.24 |
| 60 | 8.2 | Testiranje performansi | manual | 79d | 2020-01-13 | 2020-04-30 | 59 | ETF-R1; ETF-TEST; ADAX-TEST [50%]; ADAX-T1 [50%]; LJUBLJANA-R1 [50%]; LJUBLJANA-T1 [50%]; IT-R1 [50%]; IT-T1 [50%]; UMEA-R1 [25%]; UMEA-T1 [25%] | 3476h | 60,659.36 |
| 61 | 8.3 | Evaluacija kvaliteta krajnjeg proizvoda | manual | 42d | 2020-05-04 | 2020-06-30 | 60 | ETF-R1; ETF-TEST; ADAX-TEST [50%]; ADAX-T1 [50%]; LJUBLJANA-R1 [50%]; LJUBLJANA-T1 [50%] | 1344h | 19,827.36 |
| 62 | 8.4 | Evaluacija kvaliteta krajnjeg proizvoda | milestone, manual | 1d | 2020-06-30 | 2020-06-30 |  |  |  |  |
| 63 | 9 | **Menadzment** |  | 451d | 2018-10-01 | 2020-06-30 | 8 |  | 1804h | 24,354 |
| 64 | 9.1 | Upravljanje projektom | manual | 451d | 2018-10-01 | 2020-06-30 | 8 | MENADZER-GLAVNI [50%] | 1804h | 24,354 |
| 65 | 10 | **Administrativni poslovi** |  | 426d | 2018-11-01 | 2020-06-26 | 8 |  | 408h | 2,297.04 |
| 66 | 10.1 | Pisanje mesecnog izvestaja za oktobar 2018. | manual | 2d | 2018-11-01 | 2018-11-02 |  | ADMINISTRACIJA | 16h | 90.08 |
| 67 | 10.2 | Pisanje mesecnog izvestaja za novembar 2018. | manual | 2d | 2018-11-29 | 2018-11-30 |  | ADMINISTRACIJA | 16h | 90.08 |
| 68 | 10.3 | Pisanje godisnjeg izvestaja | manual | 5d | 2019-01-08 | 2019-01-14 |  | ADMINISTRACIJA | 40h | 225.2 |
| 69 | 10.4 | Pisanje mesecnog izvestaja za januar 2019. | manual | 2d | 2019-01-31 | 2019-02-01 |  | ADMINISTRACIJA | 16h | 90.08 |
| 70 | 10.5 | Pisanje mesecnog izvestaja za februar 2019. | manual | 2d | 2019-02-28 | 2019-03-01 |  | ADMINISTRACIJA | 16h | 90.08 |
| 71 | 10.6 | Pisanje mesecnog izvestaja za mart 2019. | manual | 2d | 2019-04-04 | 2019-04-05 |  | ADMINISTRACIJA | 16h | 90.08 |
| 72 | 10.7 | Pisanje mesecnog izvestaja za april 2019. | manual | 2d | 2019-05-02 | 2019-05-03 |  | ADMINISTRACIJA | 16h | 90.08 |
| 73 | 10.8 | Pisanje mesecnog izvestaja za maj 2019. | manual | 2d | 2019-06-06 | 2019-06-07 |  | ADMINISTRACIJA | 16h | 90.08 |
| 74 | 10.9 | Pisanje mesecnog izvestaja za jun 2019. | manual | 2d | 2019-07-04 | 2019-07-05 |  | ADMINISTRACIJA | 16h | 90.08 |
| 75 | 10.10 | Pisanje mesecnog izvestaja za jul 2019. | manual | 2d | 2019-08-01 | 2019-08-02 |  | ADMINISTRACIJA | 16h | 90.08 |
| 76 | 10.11 | Pisanje mesecnog izvestaja za avgust 2019. | manual | 2d | 2019-09-05 | 2019-09-06 |  | ADMINISTRACIJA | 16h | 90.08 |
| 77 | 10.12 | Pisanje mesecnog izvestaja za septembar 2019. | manual | 2d | 2019-10-03 | 2019-10-04 |  | ADMINISTRACIJA | 16h | 90.08 |
| 78 | 10.13 | Pisanje mesecnog izvestaja za oktobar 2019. | manual | 2d | 2019-10-31 | 2019-11-01 |  | ADMINISTRACIJA | 16h | 90.08 |
| 79 | 10.14 | Pisanje mesecnog izvestaja za novembar 2019. | manual | 2d | 2019-12-05 | 2019-12-06 |  | ADMINISTRACIJA | 16h | 90.08 |
| 80 | 10.15 | Pisanje godisnjeg izvestaja | manual | 5d | 2020-01-06 | 2020-01-13 |  | ADMINISTRACIJA | 40h | 225.2 |
| 81 | 10.16 | Pisanje mesecnog izvestaja za januar 2020. | manual | 2d | 2020-02-06 | 2020-02-07 |  | ADMINISTRACIJA | 16h | 90.08 |
| 82 | 10.17 | Pisanje mesecnog izvestaja za februar 2020. | manual | 2d | 2020-03-05 | 2020-03-06 |  | ADMINISTRACIJA | 16h | 90.08 |
| 83 | 10.18 | Pisanje mesecnog izvestaja za mart 2020. | manual | 2d | 2020-04-02 | 2020-04-03 |  | ADMINISTRACIJA | 16h | 90.08 |
| 84 | 10.19 | Pisanje mesecnog izvestaja za april 2020. | manual | 2d | 2020-04-29 | 2020-04-30 |  | ADMINISTRACIJA | 16h | 90.08 |
| 85 | 10.20 | Pisanje mesecnog izvestaja za maj 2020. | manual | 2d | 2020-06-04 | 2020-06-05 |  | ADMINISTRACIJA | 16h | 90.08 |
| 86 | 10.21 | Pisanje krajnjeg izvestaja | manual | 5d | 2020-06-22 | 2020-06-26 |  | ADMINISTRACIJA | 40h | 225.2 |
